# Cronograma

How a schedule from MS Project changed from version to version. A marks actual dates.

## Version 1 (saved 2009-03-31)

| ID | WBS | Task | Duration | Start | Finish | Predecessors | Complete | Total float | Constraint |
| --- | --- | --- | --- | --- | --- | --- | --- | --- | --- |
| 1 |  | Pré-Projeto | 6.44d | 2009-02-28 A | 2009-03-07 A |  | 100% |  | start no earlier than 2009-02-28 |
| 2 | 2 | **Trabalho Escrito** | 57.38d? | 2009-03-07 A | 2009-05-30 | 1 | 75% | 0d |  |
| 3 | 2.1 | **Introdução** | 5.69d | 2009-03-07 A | 2009-03-14 |  | 95% | 51.69d |  |
| 4 |  | Motivação | 3d | 2009-03-07 A | 2009-03-10 A |  | 100% |  | start no earlier than 2009-03-07 |
| 5 |  | Justificativa do Tema | 3d | 2009-03-07 A | 2009-03-10 A |  | 100% |  |  |
| 6 |  | Relevância | 3d | 2009-03-07 A | 2009-03-10 A |  | 100% |  |  |
| 7 |  | Objetivos do Sistema | 3d | 2009-03-07 A | 2009-03-10 A |  | 100% |  |  |
| 8 |  | Geral (marco do projeto) | 3d | 2009-03-07 A | 2009-03-10 A |  | 100% |  |  |
| 9 |  | Específicos (metas para se atingir o objetivo geral) | 3d | 2009-03-07 A | 2009-03-10 A |  | 100% |  |  |
| 10 |  | Análise Institucional | 3d | 2009-03-07 A | 2009-03-10 A |  | 100% |  |  |
| 11 |  | A empresa e seu negócio | 3d | 2009-03-07 A | 2009-03-10 A |  | 100% |  |  |
| 12 |  | Usuário principal | 4d | 2009-03-07 A | 2009-03-12 |  | 93% | 53.38d |  |
| 13 |  | Organograma da empresa | 4d | 2009-03-07 A | 2009-03-12 |  | 93% | 53.38d |  |
| 14 |  | A área de negócios contextualizada | 4d | 2009-03-07 A | 2009-03-12 |  | 93% | 53.38d |  |
| 15 |  | Descrição do restante do Trabalho | 1d | 2009-03-13 | 2009-03-14 |  |  | 51.12d | finish no earlier than 2009-03-14 |
| 16 |  | Embasamento Teórico | 5.69d? | 2009-03-14 A | 2009-03-21 | 15 | 90% | 46d | finish no earlier than 2009-03-21 |
| 17 | 2.3 | **Análise Funcional** | 5.69d | 2009-03-21 A | 2009-03-28 A | 16 | 100% |  |  |
| 18 |  | Análise das necessidades e problemas diagnosticados | 1d | 2009-03-21 A | 2009-03-22 A |  | 100% |  |  |
| 19 |  | Proposta de solução | 2d | 2009-03-21 A | 2009-03-22 A |  | 100% |  |  |
| 20 |  | Benefícios esperados | 3d | 2009-03-21 A | 2009-03-24 A |  | 100% |  |  |
| 21 |  | Análise de Riscos (opcional) | 3d | 2009-03-24 A | 2009-03-28 A |  | 100% |  | finish no earlier than 2009-03-28 |
| 22 | 2.4 | **Abrangência do Sistema** | 5.69d | 2009-03-28 A | 2009-04-04 A | 21 | 100% |  |  |
| 23 |  | Possibilidade de implantação em outras Empresas; | 3d | 2009-03-28 A | 2009-03-31 A |  | 100% |  |  |
| 24 |  | Não abrangência – são as restrições d trabalho (o que o sistema não irá abranger); | 3d | 2009-03-28 A | 2009-03-31 A |  | 100% |  |  |
| 25 |  | Ambiente Tecnológico Atual (se existir) | 3d | 2009-03-28 A | 2009-03-31 A |  | 100% |  |  |
| 26 |  | Ambiente Tecnológico Proposto | 4d | 2009-03-28 A | 2009-04-02 A |  | 100% |  |  |
| 27 |  | Ambiente Físico Atual - salas, CPD, estrutura física | 4d | 2009-03-28 A | 2009-04-02 A |  | 100% |  |  |
| 28 |  | Ambiente Físico Proposto - salas, CPD, estrutura física | 4d | 2009-03-28 A | 2009-04-02 A |  | 100% |  |  |
| 29 |  | Cronograma para a realização do projeto | 3d | 2009-03-31 A | 2009-04-04 A |  | 100% |  | finish no earlier than 2009-04-04 |
| 30 | 2.5 | **Projetos Lógico e Físico** | 23.5d? | 2009-03-07 A | 2009-04-05 |  | 82% | 33.88d |  |
| 31 | 2.5.1 | **Requisitos do usuário** | 23.5d? | 2009-03-07 A | 2009-04-05 |  | 82% | 33.88d |  |
| 32 |  | Requisitos Funcionais | 15.75d? | 2009-03-07 A | 2009-03-27 |  | 90% | 41.62d | finish no earlier than 2009-03-27 |
| 33 |  | Requisitos Não-Funcionais | 16.5d? | 2009-03-07 A | 2009-03-28 |  | 80% | 40.88d | start no earlier than 2009-03-07 |
| 34 | 2.5.1.3 | **Requisitos Suplementares** | 23.5d? | 2009-03-07 A | 2009-04-05 |  | 80% | 33.88d |  |
| 35 |  | Requisitos de Integridade | 1d? | 2009-03-07 A | 2009-03-08 A |  | 100% |  |  |
| 36 |  | Requisitos de Segurança | 1d? | 2009-03-07 A | 2009-03-08 A |  | 100% |  |  |
| 37 |  | Requisitos de Desempenho | 1d? | 2009-03-07 A | 2009-03-08 A |  | 100% |  |  |
| 38 |  | Requisitos de Usabilidade | 1d? | 2009-03-07 A | 2009-03-08 A |  | 100% |  |  |
| 39 |  | Requisitos de interface externa | 1d? | 2009-03-07 A | 2009-03-08 A |  | 100% |  |  |
| 40 |  | Requisitos de interface com ambiente de hardware | 1d? | 2009-03-07 A | 2009-03-08 A |  | 100% |  |  |
| 41 |  | Requisitos de interface com ambiente de software | 1d? | 2009-03-07 A | 2009-03-08 A |  | 100% |  |  |
| 42 |  | Requisitos de execução | 1d? | 2009-03-07 A | 2009-03-08 A |  | 100% |  |  |
| 43 |  | Requisitos genéricos | 1d? | 2009-03-07 A | 2009-03-08 A |  | 100% |  |  |
| 44 |  | Requisitos inversos (se necessário) | 23.5d? | 2009-03-07 A | 2009-04-05 |  | 72% | 33.88d | start no earlier than 2009-03-07 |
| 45 | 2.6 | **Modelagem Funcional** | 1d? | 2009-03-07 | 2009-03-08 |  |  | 56.38d |  |
| 46 |  | Diagramas de Casos de Uso | 1d? | 2009-03-07 | 2009-03-08 |  |  | 56.38d |  |
| 47 |  | Diagramas de Classe de Alto Nível Relativos aos Casos de Uso | 1d? | 2009-03-07 | 2009-03-08 |  |  | 56.38d |  |
| 48 |  | Modelo Entidade-Relacionamento (MER) | 1d? | 2009-03-07 | 2009-03-08 |  |  | 56.38d |  |
| 49 | 2.7 | **Modelagem Lógica / Física** | 1d? | 2009-03-07 | 2009-03-08 |  |  | 56.38d |  |
| 50 | 2.7.1 | **Diagrama de Classes, detalhando atributos e operações** | 1d? | 2009-03-07 | 2009-03-08 |  |  | 56.38d |  |
| 51 |  | Classes de Dados - entity | 1d? | 2009-03-07 | 2009-03-08 |  |  | 56.38d |  |
| 52 |  | Classes de Interface - boundary | 1d? | 2009-03-07 | 2009-03-08 |  |  | 56.38d |  |
| 53 |  | Classes de controle - control | 1d? | 2009-03-07 | 2009-03-08 |  |  | 56.38d |  |
| 54 |  | Diagrama de Atividades | 1d? | 2009-03-07 | 2009-03-08 |  |  | 56.38d |  |
| 55 |  | Diagrama de Seqüência | 1d? | 2009-03-07 | 2009-03-08 |  |  | 56.38d |  |
| 56 |  | Diagrama de Colaboração, quando necessário | 1d? | 2009-03-07 | 2009-03-08 |  |  | 56.38d |  |
| 57 |  | Diagrama de Estados | 1d? | 2009-03-07 | 2009-03-08 |  |  | 56.38d |  |
| 58 | 2.8 | **Implementação Física** | 1d? | 2009-03-07 | 2009-03-08 |  |  | 56.38d |  |
| 59 |  | Diagrama de Navegação Via Menus | 1d? | 2009-03-07 | 2009-03-08 |  |  | 56.38d |  |
| 60 |  | Descrição das Interfaces | 1d? | 2009-03-07 | 2009-03-08 |  |  | 56.38d |  |
| 61 |  | Dicionário de dados | 1d? | 2009-03-07 | 2009-03-08 |  |  | 56.38d |  |
| 62 |  | Descrição dos programas | 1d? | 2009-03-07 | 2009-03-08 |  |  | 56.38d |  |
| 63 | 2.9 | **Arquitetura Computacional** | 1d? | 2009-03-07 | 2009-03-08 |  |  | 56.38d |  |
| 64 |  | Diagrama de componentes | 1d? | 2009-03-07 | 2009-03-08 |  |  | 56.38d |  |
| 65 |  | Diagrama de execução | 1d? | 2009-03-07 | 2009-03-08 |  |  | 56.38d |  |
| 66 |  | Formas de armazenamento e disponibilização dos dados | 1d? | 2009-03-07 | 2009-03-08 |  |  | 56.38d |  |
| 67 |  | Diagrama da Rede | 1d? | 2009-03-07 | 2009-03-08 |  |  | 56.38d |  |
| 68 |  | Softwares Básicos e de Apoio Utilizados | 1d? | 2009-03-07 | 2009-03-08 |  |  | 56.38d |  |
| 69 |  | Detalhamento dos hardwares necessários | 1d? | 2009-03-07 | 2009-03-08 |  |  | 56.38d |  |
| 70 | 2.10 | **Segurança** | 1d? | 2009-03-07 | 2009-03-08 |  |  | 56.38d |  |

| ID | WBS | Task | Duration | Start | Finish | Complete | Total float | Constraint |
| --- | --- | --- | --- | --- | --- | --- | --- | --- |
| 71 |  | Mecanismos de Segurança e Privacidade de Dados | 1d? | 2009-03-07 | 2009-03-08 |  | 56.38d |  |
| 72 |  | Mecanismos de Segurança de Equipamentos e Instalações | 1d? | 2009-03-07 | 2009-03-08 |  | 56.38d |  |
| 73 | 2.11 | **Projetos Futuros** | 1d? | 2009-03-07 | 2009-03-08 |  | 56.38d |  |
| 74 |  | Perspectivas futuras de negócios | 1d? | 2009-03-07 | 2009-03-08 |  | 56.38d |  |
| 75 |  | Perspectivas futuras de tecnologia | 1d? | 2009-03-07 | 2009-03-08 |  | 56.38d |  |
| 76 |  | Conclusão | 1d? | 2009-03-07 | 2009-03-08 |  | 56.38d |  |
| 77 |  | Referências Bibliográficas | 1d? | 2009-03-07 A | 2009-03-08 | 50% | 56.38d |  |
| 78 |  | Glossário | 1d? | 2009-03-07 | 2009-03-08 |  | 56.38d |  |
| 79 |  | Anexos | 1d? | 2009-03-07 | 2009-03-08 |  | 56.38d |  |
| 80 |  | Apêndices | 1d? | 2009-05-29 | 2009-05-30 |  | 0d | finish no earlier than 2009-05-30 |
| 81 |  | Implementação | 41.06d? | 2009-03-28 | 2009-05-30 |  | 0d | finish no earlier than 2009-05-30 |

## Version 2 (saved 2009-04-01)

Last finish stays 2009-05-30. Complete tasks 29 → 19.

Added:

| ID | Task | Duration | Start | Finish | Constraint | Resources |
| --- | --- | --- | --- | --- | --- | --- |
| 33 | Atualiza Parâmetro | 1d | 2009-03-08 A | 2009-03-08 | start no earlier than 2009-03-08 | Leandro de Barros |
| 34 | Mantém Usuário | 1d | 2009-03-09 A | 2009-03-10 | start no earlier than 2009-03-09 | Carlos Henrique |
| 35 | Mantém Convênio | 1.69d? | 2009-03-09 A | 2009-03-12 | finish no earlier than 2009-03-12 | Laurindo Souza |
| 36 | Mantém Consultas e Exames | 3.69d? | 2009-03-15 A | 2009-03-20 | finish no earlier than 2009-03-20 | Carlos Henrique |
| 37 | Mantém Agenda Médica | 3.88d? | 2009-03-11 A | 2009-03-15 | finish no earlier than 2009-03-15 | Leandro de Barros |
| 38 | Atualiza Histórico de Prontuário | 3.88d? | 2009-03-11 A | 2009-03-15 | finish no earlier than 2009-03-15 | Carlos Henrique |
| 39 | Realiza Login | 1d? | 2009-03-08 A | 2009-03-09 | finish no earlier than 2009-03-09 | Leandro de Barros |
| 40 | Emite Receita | 4.56d? | 2009-03-21 A | 2009-03-26 | finish no earlier than 2009-03-26 | Laurindo Souza |
| 41 | Emite Relatórios de Convênio | 4.56d? | 2009-03-12 A | 2009-03-17 | finish no earlier than 2009-03-17 | Laurindo Souza |
| 42 | Emite Relatórios de Usuário | 1.44d? | 2009-03-15 A | 2009-03-16 | finish no earlier than 2009-03-16 | Leandro de Barros |
| 43 | Emite Relatórios de Prontuário | 4.56d? | 2009-03-18 A | 2009-03-23 | finish no earlier than 2009-03-23 | Laurindo Souza |
| 44 | Emite Relatórios de Log | 1.12d? | 2009-03-23 A | 2009-03-25 | finish no earlier than 2009-03-25 | Carlos Henrique |
| 73 | Atualiza Parâmetro | 1d? | 2009-03-07 | 2009-03-08 |  |  |
| 74 | Mantém Usuário | 1d? | 2009-03-07 | 2009-03-08 |  |  |
| 75 | Mantém Convênio | 1d? | 2009-03-07 | 2009-03-08 |  |  |
| 76 | Mantém Consultas e Exames | 1d? | 2009-03-07 | 2009-03-08 |  |  |
| 77 | Mantém Agenda Médica | 1d? | 2009-03-07 | 2009-03-08 |  |  |
| 78 | Atualiza Histórico de Prontuário | 1d? | 2009-03-07 | 2009-03-08 |  |  |
| 79 | Realiza Login | 1d? | 2009-03-07 | 2009-03-08 |  |  |
| 80 | Emite Receita | 1d? | 2009-03-07 | 2009-03-08 |  |  |
| 81 | Emite Relatórios de Convênio | 1d? | 2009-03-07 | 2009-03-08 |  |  |
| 82 | Emite Relatórios de Usuário | 1d? | 2009-03-07 | 2009-03-08 |  |  |
| 83 | Emite Relatórios de Prontuário | 1d? | 2009-03-07 | 2009-03-08 |  |  |
| 84 | Emite Relatórios de Log | 1d? | 2009-03-07 | 2009-03-08 |  |  |
| 106 | Preparação | 1d? | 2009-02-28 | 2009-02-28 |  | Laurindo Souza |
| 107 | **Codificação** | 1d? | 2009-02-28 | 2009-02-28 |  |  |
| 108 | Atualiza Parâmetro | 1d? | 2009-02-28 | 2009-02-28 |  |  |
| 109 | Mantém Usuário | 1d? | 2009-02-28 | 2009-02-28 |  |  |
| 110 | Mantém Convênio | 1d? | 2009-02-28 | 2009-02-28 |  |  |
| 111 | Mantém Consultas e Exames | 1d? | 2009-02-28 | 2009-02-28 |  |  |
| 112 | Mantém Agenda Médica | 1d? | 2009-02-28 | 2009-02-28 |  |  |
| 113 | Atualiza Histórico de Prontuário | 1d? | 2009-02-28 | 2009-02-28 |  |  |
| 114 | Realiza Login | 1d? | 2009-02-28 | 2009-02-28 |  |  |
| 115 | Emite Receita | 1d? | 2009-02-28 | 2009-02-28 |  |  |
| 116 | Emite Relatórios de Convênio | 1d? | 2009-02-28 | 2009-02-28 |  |  |
| 117 | Emite Relatórios de Usuário | 1d? | 2009-02-28 | 2009-02-28 |  |  |
| 118 | Emite Relatórios de Prontuário | 1d? | 2009-02-28 | 2009-02-28 |  |  |
| 119 | Emite Relatórios de Log | 1d? | 2009-02-28 | 2009-02-28 |  |  |

Changed:

| ID | Task | Start | Finish | Duration | Complete | Total float | Other |
| --- | --- | --- | --- | --- | --- | --- | --- |
| 1 | Pré-Projeto |  |  |  |  |  | resources none → Carlos Henrique; Laurindo Souza; Leandro de Barros |
| 2 | **Trabalho Escrito** |  |  |  | 75% → 65% |  |  |
| 3 | **Introdução** |  | 2009-03-14 A |  | 95% → 100% | 51.69d → none |  |
| 4 | Motivação |  |  |  |  |  | resources none → Carlos Henrique; Laurindo Souza; Leandro de Barros |
| 5 | Justificativa do Tema |  |  |  |  |  | resources none → Carlos Henrique; Laurindo Souza; Leandro de Barros |
| 6 | Relevância |  |  |  |  |  | resources none → Carlos Henrique; Laurindo Souza; Leandro de Barros |
| 7 | Objetivos do Sistema |  |  |  |  |  | resources none → Carlos Henrique; Laurindo Souza; Leandro de Barros |
| 8 | Geral (marco do projeto) |  |  |  |  |  | resources none → Carlos Henrique; Laurindo Souza; Leandro de Barros |
| 9 | Específicos (metas para se atingir o objetivo geral) |  |  |  |  |  | resources none → Carlos Henrique; Laurindo Souza; Leandro de Barros |
| 10 | Análise Institucional |  |  |  |  |  | resources none → Carlos Henrique; Laurindo Souza; Leandro de Barros |
| 11 | A empresa e seu negócio |  |  |  |  |  | resources none → Carlos Henrique; Laurindo Souza; Leandro de Barros |
| 12 | Usuário principal |  | 2009-03-12 A |  | 93% → 100% | 53.38d → none | resources none → Carlos Henrique |
| 13 | Organograma da empresa |  | 2009-03-12 A |  | 93% → 100% | 53.38d → none | resources none → Carlos Henrique |
| 14 | A área de negócios contextualizada |  | 2009-03-12 A |  | 93% → 100% | 53.38d → none | resources none → Carlos Henrique |
| 15 | Descrição do restante do Trabalho | 2009-03-13 A | 2009-03-14 A |  | 0% → 100% | 51.12d → none | resources none → Leandro de Barros |
| 16 | Embasamento Teórico |  |  |  | 90% → 95% |  | resources none → Leandro de Barros |
| 17 | **Análise Funcional** |  |  |  |  |  | resources none → Carlos Henrique |
| 18 | Análise das necessidades e problemas diagnosticados |  |  |  |  |  | resources none → Carlos Henrique |
| 19 | Proposta de solução |  |  |  |  |  | resources none → Carlos Henrique |
| 20 | Benefícios esperados |  |  |  |  |  | resources none → Carlos Henrique |
| 21 | Análise de Riscos (opcional) |  |  |  |  |  | resources none → Carlos Henrique |
| 22 | **Abrangência do Sistema** | 2009-03-28 A → 2009-03-07 A (-21d) | 2009-04-04 A → 2009-04-04 | 5.69d → 22.75d | 100% → 50% | none → 34.62d |  |
| 23 | Possibilidade de implantação em outras Empresas; | 2009-03-28 A → 2009-03-07 A (-21d) | 2009-03-31 A → 2009-03-10 A (-21d) |  |  |  | resources none → Carlos Henrique |
| 24 | Não abrangência – são as restrições d trabalho (o que o sistema não irá abranger); | 2009-03-28 A → 2009-03-07 A (-21d) | 2009-03-31 A → 2009-03-10 A (-21d) |  |  |  | resources none → Carlos Henrique |
| 25 | Ambiente Tecnológico Atual (se existir) | 2009-03-28 A → 2009-03-28 | 2009-03-31 A → 2009-03-31 |  | 100% → 0% | none → 37.31d | resources none → Laurindo Souza |
| 26 | Ambiente Tecnológico Proposto |  | 2009-04-02 A → 2009-04-02 |  | 100% → 50% | none → 36.31d | resources none → Laurindo Souza |
| 27 | Ambiente Físico Atual - salas, CPD, estrutura física | 2009-03-28 A → 2009-03-28 | 2009-04-02 A → 2009-04-02 |  | 100% → 0% | none → 36.31d | resources none → Laurindo Souza |
| 28 | Ambiente Físico Proposto - salas, CPD, estrutura física |  | 2009-04-02 A → 2009-04-02 |  | 100% → 50% | none → 36.31d | resources none → Laurindo Souza |
| 29 | Cronograma para a realização do projeto |  | 2009-04-04 A → 2009-04-04 |  | 100% → 70% | none → 34.62d | resources none → Leandro de Barros |
| 30 | **Projetos Lógico e Físico** |  | 2009-04-05 → 2009-04-02 (-3d) | 23.5d? → 20.88d? | 82% → 79% | 33.88d → 36.5d |  |
| 31 | **Requisitos do usuário** |  | 2009-04-05 → 2009-04-02 (-3d) | 23.5d? → 20.88d? | 82% → 79% | 33.88d → 36.5d |  |
| 32 | **Requisitos Funcionais** | 2009-03-07 A → 2009-03-08 A (+1d) | 2009-03-27 → 2009-03-26 (-1d) | 15.75d? → 14.5d? | 90% → 95% | 41.62d → 42.19d | constraint finish no earlier than 2009-03-27 → none |
| 45 | Requisitos Não-Funcionais |  |  |  |  |  | resources none → Leandro de Barros |
| 46 | **Requisitos Suplementares** |  | 2009-04-05 → 2009-04-02 (-3d) | 23.5d? → 20.88d | 80% → 52% | 33.88d → 36.5d |  |
| 47 | Requisitos de Integridade |  | 2009-03-08 A → 2009-03-08 | 1d? → 2d | 100% → 48% | none → 55.38d | resources none → Leandro de Barros |
| 48 | Requisitos de Segurança |  | 2009-03-08 A → 2009-03-08 | 1d? → 2d | 100% → 48% | none → 55.38d | resources none → Leandro de Barros |
| 49 | Requisitos de Desempenho |  | 2009-03-08 A → 2009-03-08 | 1d? → 2d | 100% → 48% | none → 55.38d | resources none → Leandro de Barros |
| 50 | Requisitos de Usabilidade |  | 2009-03-08 A → 2009-03-08 | 1d? → 2d | 100% → 48% | none → 55.38d | resources none → Leandro de Barros |
| 51 | Requisitos de interface externa |  | 2009-03-08 A → 2009-03-08 | 1d? → 2d | 100% → 48% | none → 55.38d | resources none → Leandro de Barros |
| 52 | Requisitos de interface com ambiente de hardware |  | 2009-03-08 A → 2009-03-08 | 1d? → 2d | 100% → 48% | none → 55.38d | resources none → Leandro de Barros |
| 53 | Requisitos de interface com ambiente de software |  | 2009-03-08 A → 2009-03-08 | 1d? → 2d | 100% → 48% | none → 55.38d | resources none → Leandro de Barros |
| 54 | Requisitos de execução |  | 2009-03-08 A → 2009-03-08 | 1d? → 2d | 100% → 48% | none → 55.38d | resources none → Leandro de Barros |
| 55 | Requisitos genéricos |  | 2009-03-08 A → 2009-03-08 | 1d? → 2d | 100% → 48% | none → 55.38d | resources none → Leandro de Barros |
| 56 | Requisitos inversos (se necessário) |  | 2009-04-05 → 2009-04-02 (-3d) | 23.5d? → 2d | 72% → 95% | 33.88d → 36.5d | constraint start no earlier than 2009-03-07 → finish no earlier than 2009-04-02; resources none → Leandro de Barros |
| 57 | **Modelagem Funcional** | 2009-03-07 A |  |  | 0% → 32% |  |  |
| 58 | Diagramas de Casos de Uso | 2009-03-07 A |  |  | 0% → 65% |  | resources none → Leandro de Barros |
| 59 | Diagramas de Classe de Alto Nível Relativos aos Casos de Uso |  |  |  |  |  | resources none → Laurindo Souza |
| 60 | Modelo Entidade-Relacionamento (MER) | 2009-03-07 A |  |  | 0% → 30% |  | resources none → Carlos Henrique; Laurindo Souza; Leandro de Barros |
| 105 | **Implementação** | 2009-03-28 → 2009-02-28 (-28d) | 2009-05-30 → 2009-02-28 (-91d) | 41.06d? → 1d? |  | 0d → 62.81d | constraint finish no earlier than 2009-05-30 → none |

## Version 3 (saved 2009-04-01)

Last finish stays 2009-05-30.

Changed:

| ID | Task | Other |
| --- | --- | --- |
| 1 | Pré-Projeto | baseline start none → 2009-02-28; baseline finish none → 2009-03-07 |
| 2 | **Trabalho Escrito** | baseline start none → 2009-03-07; baseline finish none → 2009-05-30 |
| 3 | **Introdução** | baseline start none → 2009-03-07; baseline finish none → 2009-03-14 |
| 4 | Motivação | baseline start none → 2009-03-07; baseline finish none → 2009-03-10 |
| 5 | Justificativa do Tema | baseline start none → 2009-03-07; baseline finish none → 2009-03-10 |
| 6 | Relevância | baseline start none → 2009-03-07; baseline finish none → 2009-03-10 |
| 7 | Objetivos do Sistema | baseline start none → 2009-03-07; baseline finish none → 2009-03-10 |
| 8 | Geral (marco do projeto) | baseline start none → 2009-03-07; baseline finish none → 2009-03-10 |
| 9 | Específicos (metas para se atingir o objetivo geral) | baseline start none → 2009-03-07; baseline finish none → 2009-03-10 |
| 10 | Análise Institucional | baseline start none → 2009-03-07; baseline finish none → 2009-03-10 |
| 11 | A empresa e seu negócio | baseline start none → 2009-03-07; baseline finish none → 2009-03-10 |
| 12 | Usuário principal | baseline start none → 2009-03-07; baseline finish none → 2009-03-12 |
| 13 | Organograma da empresa | baseline start none → 2009-03-07; baseline finish none → 2009-03-12 |
| 14 | A área de negócios contextualizada | baseline start none → 2009-03-07; baseline finish none → 2009-03-12 |
| 15 | Descrição do restante do Trabalho | baseline start none → 2009-03-13; baseline finish none → 2009-03-14 |
| 16 | Embasamento Teórico | baseline start none → 2009-03-14; baseline finish none → 2009-03-21 |
| 17 | **Análise Funcional** | baseline start none → 2009-03-21; baseline finish none → 2009-03-28 |
| 18 | Análise das necessidades e problemas diagnosticados | baseline start none → 2009-03-21; baseline finish none → 2009-03-22 |
| 19 | Proposta de solução | baseline start none → 2009-03-21; baseline finish none → 2009-03-22 |
| 20 | Benefícios esperados | baseline start none → 2009-03-21; baseline finish none → 2009-03-24 |
| 21 | Análise de Riscos (opcional) | baseline start none → 2009-03-24; baseline finish none → 2009-03-28 |
| 22 | **Abrangência do Sistema** | baseline start none → 2009-03-07; baseline finish none → 2009-04-04 |
| 23 | Possibilidade de implantação em outras Empresas; | baseline start none → 2009-03-07; baseline finish none → 2009-03-10 |
| 24 | Não abrangência – são as restrições d trabalho (o que o sistema não irá abranger); | baseline start none → 2009-03-07; baseline finish none → 2009-03-10 |
| 25 | Ambiente Tecnológico Atual (se existir) | baseline start none → 2009-03-28; baseline finish none → 2009-03-31 |
| 26 | Ambiente Tecnológico Proposto | baseline start none → 2009-03-28; baseline finish none → 2009-04-02 |
| 27 | Ambiente Físico Atual - salas, CPD, estrutura física | baseline start none → 2009-03-28; baseline finish none → 2009-04-02 |
| 28 | Ambiente Físico Proposto - salas, CPD, estrutura física | baseline start none → 2009-03-28; baseline finish none → 2009-04-02 |
| 29 | Cronograma para a realização do projeto | baseline start none → 2009-03-31; baseline finish none → 2009-04-04 |
| 30 | **Projetos Lógico e Físico** | baseline start none → 2009-03-07; baseline finish none → 2009-04-02 |
| 31 | **Requisitos do usuário** | baseline start none → 2009-03-07; baseline finish none → 2009-04-02 |
| 32 | **Requisitos Funcionais** | baseline start none → 2009-03-08; baseline finish none → 2009-03-26 |
| 33 | Atualiza Parâmetro | baseline start none → 2009-03-08; baseline finish none → 2009-03-08 |
| 34 | Mantém Usuário | baseline start none → 2009-03-09; baseline finish none → 2009-03-10 |
| 35 | Mantém Convênio | baseline start none → 2009-03-09; baseline finish none → 2009-03-12 |
| 36 | Mantém Consultas e Exames | baseline start none → 2009-03-15; baseline finish none → 2009-03-20 |
| 37 | Mantém Agenda Médica | baseline start none → 2009-03-11; baseline finish none → 2009-03-15 |
| 38 | Atualiza Histórico de Prontuário | baseline start none → 2009-03-11; baseline finish none → 2009-03-15 |
| 39 | Realiza Login | baseline start none → 2009-03-08; baseline finish none → 2009-03-09 |
| 40 | Emite Receita | baseline start none → 2009-03-21; baseline finish none → 2009-03-26 |
| 41 | Emite Relatórios de Convênio | baseline start none → 2009-03-12; baseline finish none → 2009-03-17 |
| 42 | Emite Relatórios de Usuário | baseline start none → 2009-03-15; baseline finish none → 2009-03-16 |
| 43 | Emite Relatórios de Prontuário | baseline start none → 2009-03-18; baseline finish none → 2009-03-23 |
| 44 | Emite Relatórios de Log | baseline start none → 2009-03-23; baseline finish none → 2009-03-25 |
| 45 | Requisitos Não-Funcionais | baseline start none → 2009-03-07; baseline finish none → 2009-03-28 |
| 46 | **Requisitos Suplementares** | baseline start none → 2009-03-07; baseline finish none → 2009-04-02 |
| 47 | Requisitos de Integridade | baseline start none → 2009-03-07; baseline finish none → 2009-03-08 |
| 48 | Requisitos de Segurança | baseline start none → 2009-03-07; baseline finish none → 2009-03-08 |
| 49 | Requisitos de Desempenho | baseline start none → 2009-03-07; baseline finish none → 2009-03-08 |
| 50 | Requisitos de Usabilidade | baseline start none → 2009-03-07; baseline finish none → 2009-03-08 |
| 51 | Requisitos de interface externa | baseline start none → 2009-03-07; baseline finish none → 2009-03-08 |
| 52 | Requisitos de interface com ambiente de hardware | baseline start none → 2009-03-07; baseline finish none → 2009-03-08 |
| 53 | Requisitos de interface com ambiente de software | baseline start none → 2009-03-07; baseline finish none → 2009-03-08 |
| 54 | Requisitos de execução | baseline start none → 2009-03-07; baseline finish none → 2009-03-08 |
| 55 | Requisitos genéricos | baseline start none → 2009-03-07; baseline finish none → 2009-03-08 |
| 56 | Requisitos inversos (se necessário) | baseline start none → 2009-03-07; baseline finish none → 2009-04-02 |
| 57 | **Modelagem Funcional** | baseline start none → 2009-03-07; baseline finish none → 2009-03-08 |
| 58 | Diagramas de Casos de Uso | baseline start none → 2009-03-07; baseline finish none → 2009-03-08 |
| 59 | Diagramas de Classe de Alto Nível Relativos aos Casos de Uso | baseline start none → 2009-03-07; baseline finish none → 2009-03-08 |
| 60 | Modelo Entidade-Relacionamento (MER) | baseline start none → 2009-03-07; baseline finish none → 2009-03-08 |
| 61 | **Modelagem Lógica / Física** | baseline start none → 2009-03-07; baseline finish none → 2009-03-08 |
| 62 | **Diagrama de Classes, detalhando atributos e operações** | baseline start none → 2009-03-07; baseline finish none → 2009-03-08 |
| 63 | Classes de Dados - entity | baseline start none → 2009-03-07; baseline finish none → 2009-03-08 |
| 64 | Classes de Interface - boundary | baseline start none → 2009-03-07; baseline finish none → 2009-03-08 |
| 65 | Classes de controle - control | baseline start none → 2009-03-07; baseline finish none → 2009-03-08 |
| 66 | Diagrama de Atividades | baseline start none → 2009-03-07; baseline finish none → 2009-03-08 |
| 67 | Diagrama de Seqüência | baseline start none → 2009-03-07; baseline finish none → 2009-03-08 |
| 68 | Diagrama de Colaboração, quando necessário | baseline start none → 2009-03-07; baseline finish none → 2009-03-08 |
| 69 | Diagrama de Estados | baseline start none → 2009-03-07; baseline finish none → 2009-03-08 |
| 70 | **Implementação Física** | baseline start none → 2009-03-07; baseline finish none → 2009-03-08 |

| ID | Task | Other |
| --- | --- | --- |
| 71 | Diagrama de Navegação Via Menus | baseline start none → 2009-03-07; baseline finish none → 2009-03-08 |
| 72 | **Descrição das Interfaces** | baseline start none → 2009-03-07; baseline finish none → 2009-03-08 |
| 73 | Atualiza Parâmetro | baseline start none → 2009-03-07; baseline finish none → 2009-03-08 |
| 74 | Mantém Usuário | baseline start none → 2009-03-07; baseline finish none → 2009-03-08 |
| 75 | Mantém Convênio | baseline start none → 2009-03-07; baseline finish none → 2009-03-08 |
| 76 | Mantém Consultas e Exames | baseline start none → 2009-03-07; baseline finish none → 2009-03-08 |
| 77 | Mantém Agenda Médica | baseline start none → 2009-03-07; baseline finish none → 2009-03-08 |
| 78 | Atualiza Histórico de Prontuário | baseline start none → 2009-03-07; baseline finish none → 2009-03-08 |
| 79 | Realiza Login | baseline start none → 2009-03-07; baseline finish none → 2009-03-08 |
| 80 | Emite Receita | baseline start none → 2009-03-07; baseline finish none → 2009-03-08 |
| 81 | Emite Relatórios de Convênio | baseline start none → 2009-03-07; baseline finish none → 2009-03-08 |
| 82 | Emite Relatórios de Usuário | baseline start none → 2009-03-07; baseline finish none → 2009-03-08 |
| 83 | Emite Relatórios de Prontuário | baseline start none → 2009-03-07; baseline finish none → 2009-03-08 |
| 84 | Emite Relatórios de Log | baseline start none → 2009-03-07; baseline finish none → 2009-03-08 |
| 85 | Dicionário de dados | baseline start none → 2009-03-07; baseline finish none → 2009-03-08 |
| 86 | Descrição dos programas | baseline start none → 2009-03-07; baseline finish none → 2009-03-08 |
| 87 | **Arquitetura Computacional** | baseline start none → 2009-03-07; baseline finish none → 2009-03-08 |
| 88 | Diagrama de componentes | baseline start none → 2009-03-07; baseline finish none → 2009-03-08 |
| 89 | Diagrama de execução | baseline start none → 2009-03-07; baseline finish none → 2009-03-08 |
| 90 | Formas de armazenamento e disponibilização dos dados | baseline start none → 2009-03-07; baseline finish none → 2009-03-08 |
| 91 | Diagrama da Rede | baseline start none → 2009-03-07; baseline finish none → 2009-03-08 |
| 92 | Softwares Básicos e de Apoio Utilizados | baseline start none → 2009-03-07; baseline finish none → 2009-03-08 |
| 93 | Detalhamento dos hardwares necessários | baseline start none → 2009-03-07; baseline finish none → 2009-03-08 |
| 94 | **Segurança** | baseline start none → 2009-03-07; baseline finish none → 2009-03-08 |
| 95 | Mecanismos de Segurança e Privacidade de Dados | baseline start none → 2009-03-07; baseline finish none → 2009-03-08 |
| 96 | Mecanismos de Segurança de Equipamentos e Instalações | baseline start none → 2009-03-07; baseline finish none → 2009-03-08 |
| 97 | **Projetos Futuros** | baseline start none → 2009-03-07; baseline finish none → 2009-03-08 |
| 98 | Perspectivas futuras de negócios | baseline start none → 2009-03-07; baseline finish none → 2009-03-08 |
| 99 | Perspectivas futuras de tecnologia | baseline start none → 2009-03-07; baseline finish none → 2009-03-08 |
| 100 | Conclusão | baseline start none → 2009-03-07; baseline finish none → 2009-03-08 |
| 101 | Referências Bibliográficas | baseline start none → 2009-03-07; baseline finish none → 2009-03-08 |
| 102 | Glossário | baseline start none → 2009-03-07; baseline finish none → 2009-03-08 |
| 103 | Anexos | baseline start none → 2009-03-07; baseline finish none → 2009-03-08 |
| 104 | Apêndices | baseline start none → 2009-05-29; baseline finish none → 2009-05-30 |
| 105 | **Implementação** | baseline start none → 2009-02-28; baseline finish none → 2009-02-28 |
| 106 | Preparação | baseline start none → 2009-02-28; baseline finish none → 2009-02-28 |
| 107 | **Codificação** | baseline start none → 2009-02-28; baseline finish none → 2009-02-28 |
| 108 | Atualiza Parâmetro | baseline start none → 2009-02-28; baseline finish none → 2009-02-28 |
| 109 | Mantém Usuário | baseline start none → 2009-02-28; baseline finish none → 2009-02-28 |
| 110 | Mantém Convênio | baseline start none → 2009-02-28; baseline finish none → 2009-02-28 |
| 111 | Mantém Consultas e Exames | baseline start none → 2009-02-28; baseline finish none → 2009-02-28 |
| 112 | Mantém Agenda Médica | baseline start none → 2009-02-28; baseline finish none → 2009-02-28 |
| 113 | Atualiza Histórico de Prontuário | baseline start none → 2009-02-28; baseline finish none → 2009-02-28 |
| 114 | Realiza Login | baseline start none → 2009-02-28; baseline finish none → 2009-02-28 |
| 115 | Emite Receita | baseline start none → 2009-02-28; baseline finish none → 2009-02-28 |
| 116 | Emite Relatórios de Convênio | baseline start none → 2009-02-28; baseline finish none → 2009-02-28 |
| 117 | Emite Relatórios de Usuário | baseline start none → 2009-02-28; baseline finish none → 2009-02-28 |
| 118 | Emite Relatórios de Prontuário | baseline start none → 2009-02-28; baseline finish none → 2009-02-28 |
| 119 | Emite Relatórios de Log | baseline start none → 2009-02-28; baseline finish none → 2009-02-28 |
